# BEST加料系统

Schedule from a web Gantt chart, 2023-01-01 to 2027-08-10.
Every day is a working day

## Schedule

| ID | WBS | Task | Duration | Start | Finish | Predecessors | Complete | Status |
| --- | --- | --- | --- | --- | --- | --- | --- | --- |
| 2 | 1 | **弹丸系统** | 1683d | 2023-01-01 | 2027-08-10 |  |  |  |
| 3 | 1.1 | 弹丸注入系统设计 | 730d | 2023-01-01 | 2024-12-30 |  |  |  |
| 4 | 1.2 | 制冰系统设计 | 364d | 2023-01-01 | 2023-12-30 |  |  |  |
| 5 | 1.3 | 切割及加速、抽气系统设计 | 182d | 2024-01-01 | 2024-06-30 |  |  | waiting |
| 6 | 1.4 | 研发试制 | 365d | 2024-07-01 | 2025-06-30 |  |  | waiting |
| 7 | 1.5 | 台面测试及优化 | 549d | 2025-07-01 | 2026-12-31 |  |  | waiting |
| 8 | 1.6 | 现场安装调试 | 222d | 2027-01-01 | 2027-08-10 |  |  | waiting |
| 9 | 2 | **紧凑环加料系统** | 1683d | 2023-01-01 | 2027-08-10 |  | 16% |  |
| 10 | 2.1 | 紧凑环加料系统参数设计 | 90d | 2023-01-01 | 2023-03-31 |  | 100% | done |
| 11 | 2.2 | CT工程系统设计 | 303d | 2023-01-01 | 2023-10-30 |  | 100% | done |
| 12 | 2.3 | CT关键部件采购 | 730d | 2023-01-01 | 2024-12-30 |  |  |  |
| 13 | 2.4 | CT电源系统、主机系统台面测试 | 547d | 2024-01-01 | 2025-06-30 |  |  | waiting |
| 14 | 2.5 | CT整机台面测试 | 550d | 2025-06-30 | 2026-12-31 |  |  | waiting |
| 15 | 2.6 | CT现场安装调试 | 222d | 2027-01-01 | 2027-08-10 |  |  | waiting |
| 16 | 3 | **超声分子束注入系统** | 1683d | 2023-01-01 | 2027-08-10 |  | 17% |  |
| 17 | 3.1 | SMBI系统加料需求及物理设计 | 90d | 2023-01-01 | 2023-03-31 |  | 100% | done |
| 18 | 3.2 | SMBI系统工程设计 | 245d | 2023-03-01 | 2023-10-31 |  | 100% | done |
| 19 | 3.3 | SMBI主要设备材料采购 | 365d | 2023-04-01 | 2024-03-30 |  |  |  |
| 20 | 3.4 | SMBI系统研制 | 547d | 2024-01-01 | 2025-06-30 |  |  | waiting |
| 21 | 3.5 | SMBI系统台面测试 | 549d | 2025-07-01 | 2026-12-31 | 20 |  | waiting |
| 22 | 3.6 | SMBI系统安装调试 | 222d | 2027-01-01 | 2027-08-10 | 21 |  | waiting |
| 23 | 4 | **气体注入系统** | 1683d | 2023-01-01 | 2027-08-10 |  | 15% |  |
| 24 | 4.1 | 气体注入系统工程设计 | 304d | 2023-01-01 | 2023-10-31 |  | 100% | done |
| 25 | 4.2 | 气体注入系统阀门样品采购 | 152d | 2023-11-01 | 2024-03-31 |  |  |  |
| 26 | 4.3 | 气体注入系统阀门样品测试 | 275d | 2024-04-01 | 2024-12-31 | 25 |  | waiting |
| 27 | 4.4 | 加料系统供气管道加工 | 365d | 2025-01-01 | 2025-12-31 |  |  | waiting |
| 28 | 4.5 | 气体注入系统阀门箱加工 | 365d | 2025-01-01 | 2025-12-31 |  |  | waiting |
| 29 | 4.6 | 气体注入系统设备采购 | 365d | 2026-01-01 | 2026-12-31 |  |  | waiting |
| 30 | 4.7 | 气体注入系统安装 | 222d | 2027-01-01 | 2027-08-10 | 29 |  | waiting |
